# UUPon PWA 发展规划

Schedule from a web Gantt chart, 2024-05-27 to 2024-07-03.
Saturdays and Sundays are off

## Schedule

| ID | WBS | Task | Duration | Start | Finish | Predecessors | Complete | inPeople | Status |
| --- | --- | --- | --- | --- | --- | --- | --- | --- | --- |
| 2 | 1 | **UUPon PWA 阶段一** | 16d | 2024-05-27 | 2024-06-17 |  | 33% |  |  |
| 3 | 1.1 | 需求确认 | 3d | 2024-05-27 | 2024-05-29 |  | 100% | 朱春雷 | done |
| 4 | 1.2 | 地图模式UIUX交付 | 1d | 2024-05-27 | 2024-05-27 |  | 100% | 治玮 | done |
| 5 | 1.3 | PWA框架确认、开发 | 3d | 2024-05-27 | 2024-05-29 |  | 100% | 朱春雷 | done |
| 6 | 1.4 | 地图框架确认、开发 | 3d | 2024-05-27 | 2024-05-29 |  | 100% | 朱春雷 | done |
| 7 | 1.5 | MIFF框架确认开发 | 2d | 2024-05-27 | 2024-05-28 |  | 100% | 朱春雷 | done |
| 8 | 1.6 | 商家列表页面UIUX交付 | 15d | 2024-05-27 | 2024-06-14 |  |  | 治玮 |  |
| 9 | 1.7 | UserCode 模式整合开发 | 1d | 2024-05-27 | 2024-05-27 |  | 100% | 朱春雷 | done |
| 10 | 1.8 | 玩任务列表 | 3d | 2024-05-28 | 2024-05-30 | 9 | 50% | 朱春雷 |  |
| 11 | 1.9 | UUPon 页签列表 | 1d | 2024-05-28 | 2024-05-28 | 9 |  | 朱春雷 |  |
| 12 | 1.10 | 我的页面相关API开发 | 3d | 2024-05-27 | 2024-05-29 |  | 50% | 兴然 |  |
| 13 | 1.11 | 我的页面开发 | 3d | 2024-05-30 | 2024-06-03 | 12 |  | 朱春雷 | waiting |
| 14 | 1.12 | 注册用户以及资料补全相关 | 2d | 2024-06-04 | 2024-06-05 | 13 |  | 朱春雷 | waiting |
| 15 | 1.13 | 商家列表页面开发 | 1d | 2024-06-17 | 2024-06-17 | 8 |  | 朱春雷 | waiting |
| 16 | 1.14 | PWA模式安装提示页面开发 | 2d | 2024-05-27 | 2024-05-28 |  |  | 朱春雷 |  |
| 17 | 1.15 | 测试并提供 | 5d | 2024-05-27 | 2024-05-31 |  |  | 朱春雷 |  |
| 18 | 1.16 | Demo UAT 以及后续发版 | 1d | 2024-05-27 | 2024-05-27 |  |  | 意研 |  |
| 19 | 2 | **UUPon PWA 阶段二** | 3d | 2024-07-01 | 2024-07-03 |  |  |  |  |
| 20 | 2.1 | 结合阶段一讨论后续发展规划 | 3d | 2024-07-01 | 2024-07-03 |  |  | 老大 |  |
| 21 | 2.2 | 阶段二UIUX产出交付 | 1d | 2024-07-01 | 2024-07-01 |  |  | 治玮+老大 |  |

Notes:
- 4: 已提交地图、登入、注册相关UIUX
- 8: 商家列表UIUX需要提供
- 9: AIPool Server 开发UserCode的模式
- 10: 采用AIPool链接广告替换功能，并使用UserCode模式
- 11: 采用原UUPon API开发
- 12: 结合需要开发我的资料状态API， 并检查 和完善悠游卡绑定相关API
- 13: 结合UUPon APP 我的页面基本功能开发。 / 预计开发包括我的基本资料， 我的悠游卡列表， 我的存折功能页面
- 14: 结合我的页面以及进阶资料管理相关完成
- 15: 需要结合商家列表UIUX的产出设计和开发
- 17: 结合第一阶段内容提供PWA 模式
- 18: 结合第一阶段内容， 讨论和确认是否进行发版或讨论是否持续后续阶段二的发展
- 20: 结合阶段一的内容进行Demo 以及讨论后续发展
